# Cronograma_Aplicación de ventas SLB V1

Schedule from MS Project, 2021-08-16 to 2021-12-03, costs in $.

## Calendars

- Estándar: Mon-Fri 09:00-13:00, 15:00-19:00; Sat-Sun off.

## Resources

| Resource | Rate |
| --- | --- |
| DP | 20 |
| AF | 14 |
| AI | 14 |
| OE |  |
| Desarrollador Fronted | 16.8 |
| Desarrollador Backend | 16.8 |
| QA | 16.5 |
| AT | 14 |
| LicenciaBD |  |

## Schedule

| ID | WBS | Task | Type | Duration | Start | Finish | Predecessors | Total slack | Free slack | Resources | Work | Cost |
| --- | --- | --- | --- | --- | --- | --- | --- | --- | --- | --- | --- | --- |
| 1 | 1 | **Implementacion de un sistema de ventas de ropa juvenil** |  | 79.88d? | 2021-08-16 | 2021-12-03 |  | 0d |  |  | 218h | 3,290 |
| 2 | 1.1 | Kickoff del Proyecto | milestone | 0d | 2021-08-16 | 2021-08-16 |  | 31.75d |  |  |  |  |
| 3 | 1.2 | **Gestión de Proyecto** |  | 79.88d | 2021-08-16 | 2021-12-03 |  |  |  |  | 170h | 2,498 |
| 4 | 1.2.1 | **Inicio** |  | 2.5d | 2021-08-16 | 2021-08-18 |  | 2.5d | 1.5d |  | 48h | 622 |
| 5 | 1.2.1.1 | **Acta de Constitución** |  | 2.5d | 2021-08-16 | 2021-08-18 |  | 2.5d |  |  | 42h | 554 |
| 6 | 1.2.1.1.1 | Consolidar información |  | 1d | 2021-08-16 | 2021-08-16 |  | 2.5d | 0d | AF; DP | 16h | 272 |
| 7 | 1.2.1.1.2 | Elaborar Versión Acta de Constitución |  | 1d | 2021-08-17 | 2021-08-17 | 6 | 2.5d | 0d | AF; DP; OE | 24h | 272 |
| 8 | 1.2.1.1.3 | Aplicar mejoras |  | 0.25d | 2021-08-18 | 2021-08-18 | 7 | 2.5d | 0d | DP [25%]; OE [25%] | 1h | 10 |
| 9 | 1.2.1.1.4 | Solicitar aprobacion de Acta de Constitución |  | 0.25d | 2021-08-18 | 2021-08-18 | 8, 7 | 2.5d |  | OE [50%] | 1h |  |
| 10 | 1.2.1.1.5 | Aprobar Acta de Constitución | milestone | 0d | 2021-08-16 | 2021-08-16 |  | 22.75d | 2d |  |  |  |
| 11 | 1.2.1.2 | **Registro de Involucrados** |  | 1d | 2021-08-17 | 2021-08-17 |  | 3d |  |  | 6h | 68 |
| 12 | 1.2.1.2.1 | Reunión con Involucrados |  | 0.5d | 2021-08-17 | 2021-08-17 | 6 | 3d | 0d | DP [50%]; OE [50%] | 4h | 40 |
| 13 | 1.2.1.2.2 | Matriz de involucrados |  | 0.5d | 2021-08-17 | 2021-08-17 | 12 | 3d | 0d | AF [50%] | 2h | 28 |
| 14 | 1.2.1.3 | Proyecto formalizado | milestone | 0d | 2021-08-16 | 2021-08-16 |  | 27.75d |  |  |  |  |
| 15 | 1.2.2 | **Planificación** |  | 9d | 2021-08-18 | 2021-08-30 |  | 68.88d | 0d |  | 112h | 1,696 |
| 16 | 1.2.2.1 | **Línea Base de Alcance** |  | 4d | 2021-08-18 | 2021-08-23 |  | 68.88d |  |  | 56h | 928 |
| 17 | 1.2.2.1.1 | Lista Requisitos |  | 1d | 2021-08-18 | 2021-08-18 | 10, 13 | 20.75d | 0d | AF | 8h | 112 |
| 18 | 1.2.2.1.2 | Elaborar enunciado de Alcance |  | 1d | 2021-08-19 | 2021-08-19 | 17 | 20.75d | 0d | AF; DP | 16h | 272 |
| 19 | 1.2.2.1.3 | Elaborar EDT |  | 1d | 2021-08-20 | 2021-08-20 | 18 | 20.75d | 0d | DP; AT | 16h | 272 |
| 20 | 1.2.2.1.4 | Diccionario EDT |  | 1d | 2021-08-23 | 2021-08-23 | 19 | 20.75d | 0d | DP; AT | 16h | 272 |
| 21 | 1.2.2.2 | **Cronograma** |  | 3d | 2021-08-24 | 2021-08-26 |  | 68.88d |  |  | 40h | 544 |
| 22 | 1.2.2.2.1 | Lista de actividades |  | 1d | 2021-08-24 | 2021-08-24 | 19, 20 | 20.75d | 0d | DP; OE | 16h | 160 |
| 23 | 1.2.2.2.2 | Estimar duración |  | 1d | 2021-08-25 | 2021-08-25 | 22 | 20.75d | 0d | DP; AT | 16h | 272 |
| 24 | 1.2.2.2.3 | Confección cronograma |  | 1d | 2021-08-26 | 2021-08-26 | 23 | 20.75d | 0d | AT | 8h | 112 |

| ID | WBS | Task | Type | Duration | Start | Finish | Predecessors | Total slack | Free slack | Constraint | Resources | Work | Cost |
| --- | --- | --- | --- | --- | --- | --- | --- | --- | --- | --- | --- | --- | --- |
| 25 | 1.2.2.3 | **Presupuesto** |  | 2d | 2021-08-27 | 2021-08-30 |  | 68.88d |  |  |  | 16h | 224 |
| 26 | 1.2.2.3.1 | Estimar Costos |  | 1d | 2021-08-27 | 2021-08-27 | 24 | 20.75d | 0d |  | AT | 8h | 112 |
| 27 | 1.2.2.3.2 | Confección Presupuesto |  | 1d | 2021-08-30 | 2021-08-30 | 24, 26 | 20.75d |  |  | AT | 8h | 112 |
| 28 | 1.2.3 | **Ejecución** |  | 19.25d | 2021-08-24 | 2021-09-20 | 15SS+4d | 54.62d |  |  |  |  |  |
| 29 | 1.2.3.1 | **Reunión de seguimiento** |  | 19.25d | 2021-08-24 | 2021-09-20 |  | 54.62d |  |  |  |  |  |
| 30 | 1.2.3.1.1 | Reunión de seguimiento 1 |  | 0.25d | 2021-08-24 | 2021-08-24 |  | 25.5d |  | start no earlier than 2021-08-16 |  |  |  |
| 31 | 1.2.3.1.2 | Reunión de seguimiento 2 |  | 0.25d | 2021-08-24 | 2021-08-24 |  | 25.5d |  | start no earlier than 2021-08-23 |  |  |  |
| 32 | 1.2.3.1.3 | Reunión de seguimiento 3 |  | 0.25d | 2021-08-30 | 2021-08-30 |  | 21.5d |  | start no earlier than 2021-08-30 |  |  |  |
| 33 | 1.2.3.1.4 | Reunión de seguimiento 4 |  | 0.25d | 2021-09-06 | 2021-09-06 |  | 16.5d |  | start no earlier than 2021-09-06 |  |  |  |
| 34 | 1.2.3.1.5 | Reunión de seguimiento 5 |  | 0.25d | 2021-09-13 | 2021-09-13 |  | 11.5d |  | start no earlier than 2021-09-13 |  |  |  |
| 35 | 1.2.3.1.6 | Reunión de seguimiento 6 |  | 0.25d | 2021-09-20 | 2021-09-20 |  | 48.12d | 0d | start no earlier than 2021-09-20 |  |  |  |
| 36 | 1.2.4 | **Seguimiento y control** |  | 25.12d | 2021-08-20 | 2021-09-24 | 4 | 50.75d |  |  |  |  |  |
| 37 | 1.2.4.1 | **Presentación de informe de desempeño** |  | 25.12d | 2021-08-20 | 2021-09-24 |  | 50.75d |  |  |  |  |  |
| 38 | 1.2.4.1.1 | Presentación de informe de desempeño 1 |  | 1h | 2021-08-20 | 2021-08-20 |  | 27.62d |  | start no earlier than 2021-08-20 |  |  |  |
| 39 | 1.2.4.1.2 | Presentación de informe de desempeño 2 |  | 1h | 2021-08-27 | 2021-08-27 |  | 22.62d |  | start no earlier than 2021-08-27 |  |  |  |
| 40 | 1.2.4.1.3 | Presentación de informe de desempeño 3 |  | 1h | 2021-09-03 | 2021-09-03 |  | 17.62d |  | start no earlier than 2021-09-03 |  |  |  |
| 41 | 1.2.4.1.4 | Presentación de informe de desempeño 4 |  | 1h | 2021-09-10 | 2021-09-10 |  | 12.62d |  | start no earlier than 2021-09-10 |  |  |  |
| 42 | 1.2.4.1.5 | Presentación de informe de desempeño 5 |  | 1h | 2021-09-17 | 2021-09-17 |  | 7.62d |  | start no earlier than 2021-09-17 |  |  |  |
| 43 | 1.2.4.1.6 | Presentación de informe de desempeño 6 |  | 1h | 2021-09-24 | 2021-09-24 |  | 2.62d |  | start no earlier than 2021-09-24 |  |  |  |
| 44 | 1.2.5 | **Cierre** |  | 6.5d | 2021-09-20 | 2021-09-28 | 35 | 48.12d |  |  |  | 10h | 180 |
| 45 | 1.2.5.1 | **Acta de aceptación de producto** |  | 0.25d | 2021-09-20 | 2021-09-20 |  | 48.12d |  |  |  | 1h | 10 |
| 46 | 1.2.5.1.1 | Obtener conformidad del cliente | milestone | 0d | 2021-09-20 | 2021-09-20 |  | 48.12d | 0d |  |  |  |  |
| 47 | 1.2.5.1.2 | Aprobar acta de aceptacion |  | 0.25d | 2021-09-20 | 2021-09-20 | 46 | 48.12d | 0d |  | DP [25%]; OE [25%] | 1h | 10 |
| 48 | 1.2.5.2 | **Acta de cierre** |  | 6.25d | 2021-09-20 | 2021-09-28 |  | 48.12d |  |  |  | 9h | 170 |
| 49 | 1.2.5.2.1 | Elaborar Acta de Cierre |  | 1d | 2021-09-20 | 2021-09-21 | 47 | 48.12d | 0d |  | DP | 8h | 160 |
| 50 | 1.2.5.2.2 | Aprobar acta de cierre |  | 0.25d | 2021-09-21 | 2021-09-21 | 49 | 48.12d | 0d |  | DP [25%]; OE [25%] | 1h | 10 |
| 51 | 1.2.5.2.3 | Recopilar lecciones aprendidas |  | 5d | 2021-09-21 | 2021-09-28 | 50 | 48.12d |  |  |  |  |  |

| ID | WBS | Task | Duration | Start | Finish | Predecessors | Total slack | Work | Cost |
| --- | --- | --- | --- | --- | --- | --- | --- | --- | --- |
| 52 | 1.3 | **Gestión del producto(Ciclo de vida del producto)** | 65d? | 2021-08-23 | 2021-11-20 | 4 | 0d | 48h | 792 |
| 53 | 1.3.1 | **Fase 0 : Agile Inception** | 4.88d? | 2021-08-23 | 2021-08-27 |  |  |  |  |
| 54 | 1.3.1.1 | Prototipo definido | 1d? | 2021-08-23 | 2021-08-23 |  | 73.88d |  |  |
| 55 | 1.3.1.2 | Product Backlog Definidio y Priorizado | 1d? | 2021-08-23 | 2021-08-23 |  | 73.88d |  |  |
| 56 | 1.3.1.3 | MVP y Plan de Releases | 1d? | 2021-08-23 | 2021-08-23 |  | 73.88d |  |  |
| 57 | 1.3.1.4 | Definicion de roles | 1d? | 2021-08-23 | 2021-08-23 |  | 73.88d |  |  |
| 58 | 1.3.1.5 | Arquitectura y Diseño Técnico Definido | 1d? | 2021-08-23 | 2021-08-23 |  | 73.88d |  |  |
| 59 | 1.3.1.6 | Tareas Devops | 1d? | 2021-08-23 | 2021-08-23 |  | 73.88d |  |  |
| 60 | 1.3.1.7 | Dependencias | 1d? | 2021-08-23 | 2021-08-23 |  | 73.88d |  |  |
| 61 | 1.3.1.8 | Planificación de estrategia de pruebas | 1d? | 2021-08-23 | 2021-08-23 |  | 73.88d |  |  |
| 62 | 1.3.1.9 | Planificación Metodológica | 1d? | 2021-08-23 | 2021-08-23 |  | 73.88d |  |  |
| 63 | 1.3.2 | **Fase 1: Sprint 1** | 9.88d? | 2021-08-31 | 2021-09-11 |  |  |  |  |
| 64 | 1.3.2.1 | Sprint Planning | 1d? | 2021-08-31 | 2021-08-31 |  | 67.88d |  |  |
| 65 | 1.3.2.2 | Ejecución y Control de Sprint | 1d? | 2021-08-31 | 2021-08-31 |  | 67.88d |  |  |
| 66 | 1.3.2.3 | Daily Scrum | 1d? | 2021-08-31 | 2021-08-31 |  | 67.88d |  |  |
| 67 | 1.3.2.4 | QA | 1d? | 2021-08-31 | 2021-08-31 |  | 67.88d |  |  |
| 68 | 1.3.2.5 | Sprint Review | 1d? | 2021-08-31 | 2021-08-31 |  | 67.88d |  |  |
| 69 | 1.3.2.6 | Sprint Retrospective | 1d? | 2021-08-31 | 2021-08-31 |  | 67.88d |  |  |
| 70 | 1.3.3 | **Fase 2: Sprint 2** | 9.88d? | 2021-09-13 | 2021-09-24 |  |  |  |  |
| 71 | 1.3.3.1 | Sprint Planning | 1d? | 2021-09-13 | 2021-09-13 |  | 58.88d |  |  |
| 72 | 1.3.3.2 | Ejecución y Control de Sprint | 1d? | 2021-09-13 | 2021-09-13 |  | 58.88d |  |  |
| 73 | 1.3.3.3 | Daily Scrum | 1d? | 2021-09-13 | 2021-09-13 |  | 58.88d |  |  |
| 74 | 1.3.3.4 | Sprint Review | 1d? | 2021-09-13 | 2021-09-13 |  | 58.88d |  |  |
| 75 | 1.3.3.5 | Sprint Retrospective | 1d? | 2021-09-13 | 2021-09-13 |  | 58.88d |  |  |

| ID | WBS | Task | Duration | Start | Finish | Predecessors | Total slack | Free slack | Resources | Work | Cost |
| --- | --- | --- | --- | --- | --- | --- | --- | --- | --- | --- | --- |
| 76 | 1.3.4 | **Fase 3: Sprint 3** | 9.88d? | 2021-09-27 | 2021-10-08 |  |  |  |  |  |  |
| 77 | 1.3.4.1 | Sprint Planning | 2h | 2021-09-27 | 2021-09-27 |  | 49.62d |  |  |  |  |
| 78 | 1.3.4.2 | Ejecución y Control de Sprint | 1d? | 2021-09-27 | 2021-09-27 |  | 48.88d |  |  |  |  |
| 79 | 1.3.4.3 | Daily Scrum | 1d? | 2021-09-27 | 2021-09-27 |  | 48.88d |  |  |  |  |
| 80 | 1.3.4.4 | Sprint Review | 1d? | 2021-09-27 | 2021-09-27 |  | 48.88d |  |  |  |  |
| 81 | 1.3.4.5 | Sprint Retrospective | 1d? | 2021-09-27 | 2021-09-27 |  | 48.88d |  |  |  |  |
| 82 | 1.3.5 | **Fase 4: Sprint 4** | 15.88d? | 2021-10-11 | 2021-10-30 |  |  |  |  |  |  |
| 83 | 1.3.5.1 | Sprint Planning | 2h | 2021-10-11 | 2021-10-11 |  | 39.62d |  |  |  |  |
| 84 | 1.3.5.2 | Ejecución y Control de Sprint | 1d? | 2021-10-11 | 2021-10-11 |  | 38.88d |  |  |  |  |
| 85 | 1.3.5.3 | Daily Scrum | 1d? | 2021-10-11 | 2021-10-11 |  | 38.88d |  |  |  |  |
| 86 | 1.3.5.4 | Sprint Review | 1d? | 2021-10-11 | 2021-10-11 |  | 38.88d |  |  |  |  |
| 87 | 1.3.5.5 | Sprint Retrospective | 1d? | 2021-10-11 | 2021-10-11 |  | 38.88d |  |  |  |  |
| 88 | 1.3.6 | **Fase 5: Cierre** | 15.88d | 2021-11-01 | 2021-11-20 |  |  |  |  | 48h | 792 |
| 89 | 1.3.6.1 | Manual de Usuario | 1d | 2021-11-01 | 2021-11-01 |  | 20.88d | 0d | AT | 8h | 112 |
| 90 | 1.3.6.2 | Capacitación | 1d | 2021-11-02 | 2021-11-02 | 89 | 20.88d | 0d | DP; AF | 16h | 272 |
| 91 | 1.3.6.3 | Compra de licencia | 1d | 2021-11-03 | 2021-11-03 | 90 | 21.88d |  | DP | 8h | 160 |
| 92 | 1.3.6.4 | Pase a Producción | 1d | 2021-11-03 | 2021-11-03 | 90 | 20.88d | 0d | AI [50%]; DP [50%] | 8h | 136 |
| 93 | 1.3.6.5 | Soporte Post-Producción | 1d | 2021-11-04 | 2021-11-04 | 92 | 20.88d |  | AF [50%]; AI [50%] | 8h | 112 |
